# ProjetoCinefy

How a schedule from MS Project changed from version to version. A marks actual dates.

## Version 1 (saved 2021-08-26)

Note of the change: Diagrama de Implantação

| ID | WBS | Task | Duration | Start | Finish | Predecessors | Complete | Total float |
| --- | --- | --- | --- | --- | --- | --- | --- | --- |
| 1 | 1 | **Projeto de Final de Curso - Cinefy** | 188d | 2020-08-24 A | 2021-05-13 |  | 85% | 0d |
| 2 | 1.1 | **Documentação Cinefy** | 71d | 2020-08-24 A | 2020-12-01 A |  | 100% |  |
| 3 |  | Documento de introdução do PFC | 1d | 2020-08-24 A | 2020-08-24 A |  | 100% |  |
| 4 |  | Documento de visão | 10d | 2020-08-26 A | 2020-09-08 A | 3 | 100% |  |
| 5 |  | Atividades do negócio | 6d | 2020-09-09 A | 2020-09-16 A | 4 | 100% |  |
| 6 |  | Documento de requisitos | 5d | 2020-09-17 A | 2020-09-23 A | 5 | 100% |  |
| 7 |  | Relatório de viablidade | 5d | 2020-09-24 A | 2020-09-30 A | 6 | 100% |  |
| 8 |  | Início da diagramação da UML | 0d | 2020-10-01 A | 2020-10-01 A | 7 | 100% |  |
| 9 | 1.1.7 | **UML** | 43d | 2020-10-01 A | 2020-11-30 A |  | 100% |  |
| 10 |  | Diagrama de caso de uso geral | 8d | 2020-10-01 A | 2020-10-12 A | 8 | 100% |  |
| 11 |  | Especificação de caso de uso | 6d | 2020-10-13 A | 2020-10-20 A | 10 | 100% |  |
| 12 |  | Diagrama de classe | 6d | 2020-10-21 A | 2020-10-28 A | 11 | 100% |  |
| 13 |  | Correções das documentações e UML | 23d | 2020-10-29 A | 2020-11-30 A | 12 | 100% |  |
| 14 |  | Finalização do semestre | 0d | 2020-12-01 A | 2020-12-01 A |  | 100% |  |
| 15 | 1.2 | **Recesso** | 52d | 2020-12-01 A | 2021-02-10 A | 2 | 100% |  |
| 16 |  | Imersão JavaScript | 15d | 2020-12-01 A | 2020-12-21 A |  | 100% |  |
| 17 |  | Férias | 24d | 2020-12-22 A | 2021-01-22 A |  | 100% |  |
| 18 |  | Retorno aos estudos de programação | 13d | 2021-01-25 A | 2021-02-10 A |  | 100% |  |
| 19 |  | Retorno ao projeto | 0d | 2021-02-10 A | 2021-02-10 A |  | 100% |  |
| 20 | 1.3 | **Diagrama de Sequência** | 32d | 2021-02-11 | 2021-03-26 A | 15 | 100% |  |
| 21 |  | CreateResenha | 4d | 2021-02-12 A | 2021-02-17 A |  | 100% |  |
| 22 |  | CreateUsuario | 4d | 2021-02-18 A | 2021-02-23 A | 21 | 100% |  |
| 23 |  | DeleteUsuario | 4d | 2021-02-24 A | 2021-03-01 A | 22 | 100% |  |
| 24 |  | DeleteResenha | 4d | 2021-03-02 A | 2021-03-05 A | 23 | 100% |  |
| 25 |  | ReadResenha | 4d | 2021-03-08 A | 2021-03-11 A | 24 | 100% |  |
| 26 |  | ReadUsuario | 4d | 2021-03-12 A | 2021-03-17 A | 25 | 100% |  |
| 27 |  | UpdateResenha | 4d | 2021-03-18 A | 2021-03-23 A | 26 | 100% |  |
| 28 |  | UpdateUsuario | 3d | 2021-03-24 A | 2021-03-26 A | 27 | 100% |  |
| 29 | 1.4 | **Arquitetura de Sistemas** | 26d | 2021-02-19 A | 2021-03-26 A |  | 100% |  |
| 30 |  | Diagrama de contexto | 6d | 2021-02-19 A | 2021-02-26 A |  | 100% |  |
| 31 |  | Diagrama de pacotes | 6d | 2021-03-05 A | 2021-03-12 A | 30 | 100% |  |
| 32 |  | Diagrama de componentes da aplicação/software | 6d | 2021-03-19 A | 2021-03-26 A | 31 | 100% |  |
| 33 |  | Diagrama de dados | 4d | 2021-04-01 | 2021-04-06 |  |  |  |
| 34 |  | Início do desenvolvimento | 0d | 2021-04-21 | 2021-04-21 |  |  |  |
| 35 | 1.7 | **Desenvolvimento do sistema** | 26d | 2021-04-07 | 2021-05-12 | 33 |  | 0d |
| 36 |  | Página index | 3d | 2021-04-07 | 2021-04-09 |  |  |  |
| 37 |  | Página Cadastro | 4d | 2021-04-12 | 2021-04-15 | 36 |  |  |
| 38 |  | Página Login | 5d | 2021-04-16 | 2021-04-22 | 37 |  |  |
| 39 |  | Página Trailers dos Filmes | 8d | 2021-04-23 | 2021-05-04 | 38 |  |  |
| 40 |  | Componente Comentários Trailer | 6d | 2021-05-05 | 2021-05-12 | 39 |  |  |
| 41 |  | Entrega do Projeto parte 1 | 0d | 2021-05-13 | 2021-05-13 | 40 |  |  |

## Version 2 (saved 2021-09-09)

Note of the change: Diagrama de implantação = OK - Revisar Gerenciamento de Projeto

Last finish 2021-05-13 → 2021-11-11 (+182d).

Changed:

| ID | Task | Finish | Duration | Complete | Total float |
| --- | --- | --- | --- | --- | --- |
| 1 | **Projeto de Final de Curso - Cinefy** | 2021-05-13 → 2021-11-11 (+182d) | 188d → 319d |  | 0d → none |
| 29 | **Arquitetura de Sistemas** | 2021-03-26 A → 2021-04-21 (+26d) | 26d → 43d | 100% → 82% | none → 0d |

## Version 3 (saved 2021-09-11)

Note of the change: MER CORRIGIDO - Reestruturação do Gerenciamento de Projeto

Last finish stays 2021-11-11. Complete tasks 26 → 40.

Added:

| ID | Task | Duration | Start | Finish | Resources |
| --- | --- | --- | --- | --- | --- |
| 18 | ReadLista | 4d | 2021-04-05 A | 2021-04-08 A |  |
| 19 | UpdateLista | 4d | 2021-04-09 A | 2021-04-14 A |  |
| 20 | DeleteLista | 4d | 2021-04-15 A | 2021-04-20 A |  |
| 21 | VisualizarFeed | 4d | 2021-04-21 A | 2021-04-26 A |  |
| 22 | CreateLista | 4d | 2021-04-27 A | 2021-04-30 A |  |
| 23 | CreateGenero | 4d | 2021-05-03 A | 2021-05-06 A |  |
| 26 | Diagrama de contexto | 6d | 2021-02-19 A | 2021-02-26 A | Analista de sistema uml |
| 27 | Diagrama de dados | 4d | 2021-04-01 A | 2021-04-06 A | Analista de sistema uml |
| 28 | Diagrama de componentes | 6d | 2021-03-19 A | 2021-03-26 A | Analista de sistema uml |
| 29 | Diagrama de pacotes | 6d | 2021-03-05 A | 2021-03-12 A | Analista de sistema uml |
| 30 | Diagrama de Atividade | 1d | 2020-08-24 | 2020-08-24 | Analista de sistema uml |
| 31 | MOR | 1d | 2020-08-24 A | 2020-08-24 A | Back-End |
| 32 | MER | 1d | 2021-08-25 A | 2021-08-25 A | DBA |
| 33 | Diagrama de Implantação | 1d | 2020-08-24 A | 2020-08-24 | Analista de sistema uml |
| 39 | Analise e possíveis correções dos diagramas | 11d | 2021-09-13 A | 2021-09-27 | Analista de sistema uml |
| 41 | **Front-End** | 118d? | 2021-04-07 A | 2021-09-17 |  |
| 47 | Página Perfil | 6d | 2021-09-10 A | 2021-09-17 | Front-End |
| 48 | Página Login Admin | 1d | 2021-04-07 A | 2021-04-07 A |  |
| 49 | Página Admin Gerenciador Usuário | 13d | 2021-09-01 | 2021-09-17 |  |
| 50 | Página Admin Comentários | 13d | 2021-09-01 | 2021-09-17 |  |
| 51 | **Back-End** | 1d? | 2021-04-07 A | 2021-04-07 |  |
| 52 | Login do Usuário | 1d | 2021-04-07 A | 2021-04-07 A |  |
| 53 | Cadastro do Usuário | 1d | 2021-04-07 A | 2021-04-07 A |  |
| 54 | Perfil | 1d? | 2021-04-07 | 2021-04-07 |  |
| 55 | Feed | 1d? | 2021-04-07 | 2021-04-07 |  |
| 56 | Trailer Especifico | 1d? | 2021-04-07 | 2021-04-07 |  |
| 57 | Login Admin | 1d? | 2021-04-07 | 2021-04-07 |  |
| 58 | Gerenciador de usuários | 1d? | 2021-04-07 | 2021-04-07 |  |
| 59 | Gerenciador Comentários | 1d? | 2021-04-07 | 2021-04-07 |  |
| 60 | Link Front com Back | 1d? | 2021-04-07 | 2021-04-07 |  |

Removed: 8 Início da diagramação da UML; 9 UML; 13 Correções das documentações e UML; 14 Finalização do semestre; 15 Recesso; 16 Imersão JavaScript; 17 Férias; 18 Retorno aos estudos de programação; 19 Retorno ao projeto; 34 Início do desenvolvimento; 41 Entrega do Projeto parte 1

Changed:

| ID | Task | Start | Finish | Duration | Complete | Total float | Predecessors | Other |
| --- | --- | --- | --- | --- | --- | --- | --- | --- |
| 1 | **Projeto de Final de Curso - Cinefy** |  |  | 319d → 319d? | 85% → 82% |  |  |  |
| 2 | **Documentação Cinefy** |  | 2020-12-01 A → 2021-09-27 (+300d) | 71d → 286d | 100% → 96% | none → 0d |  |  |
| 6 | Documento de requisitos |  |  |  |  |  | 5 → 4, 5 |  |
| 7 | Relatório de viablidade |  |  |  |  |  | 6 → none |  |
| 8 | Diagrama de caso de uso geral |  |  |  |  |  | Início da diagramação da UML → 6 |  |
| 9 | **Diagrama de Sequência** | 2021-02-11 A | 2021-03-26 A → 2021-07-30 A (+126d) | 32d → 122d |  |  | Recesso → none | resources none → Analista de sistema uml |
| 10 | CreateResenha |  |  |  |  |  |  | resources Analista de sistema uml → none |
| 11 | CreateUsuario |  |  |  |  |  | 10 → none |  |
| 12 | DeleteUsuario |  |  |  |  |  | 11 → none |  |
| 13 | DeleteResenha |  |  |  |  |  | 12 → none |  |
| 14 | ReadResenha |  |  |  |  |  | 13 → none |  |
| 15 | UpdateResenha |  |  |  |  |  | 16 → none |  |
| 16 | ReadUsuario |  |  |  |  |  | 14 → none |  |
| 17 | UpdateUsuario |  |  |  |  |  | 15 → none |  |
| 25 | Diagrama de classe |  |  |  |  |  | 24 → none |  |
| 34 | **Arquitetura de Sistemas** |  | 2021-04-21 → 2021-04-06 A (-15d) | 43d → 33d | 82% → 100% | 0d → none |  | resources none → Analista de sistema uml |
| 36 | Diagrama de pacotes |  |  |  |  |  | 35 → none |  |
| 37 | Diagrama de componentes da aplicação/software |  |  |  |  |  | 36 → none |  |
| 38 | Diagrama de dados | 2021-04-01 A | 2021-04-06 A |  | 0% → 100% |  |  |  |
| 40 | **Desenvolvimento do sistema** | 2021-04-07 A | 2021-05-12 → 2021-10-29 (+170d) | 26d → 148d? | 0% → 51% | 0d → none | 38 → none |  |
| 42 | Página index | 2021-04-07 A | 2021-04-09 A |  | 0% → 100% |  |  |  |
| 43 | Página Cadastro | 2021-04-12 A | 2021-04-15 A |  | 0% → 100% |  | 42 → none | resources Full-Stack → Front-End |
| 44 | Página Login | 2021-04-16 A | 2021-04-22 A |  | 0% → 100% |  | 43 → none | resources Full-Stack → Front-End |
| 45 | Página Feed | 2021-04-23 A | 2021-05-04 A |  | 0% → 100% |  | 44 → none | was named Página Trailers dos Filmes; resources Full-Stack → Front-End |
| 46 | Página Trailer Especifico | 2021-05-05 A | 2021-05-12 A |  | 0% → 100% |  | 45 → none | was named Componente Comentários Trailer; resources Full-Stack → Front-End |

## Version 4 (saved 2021-09-13)

Note of the change: atualização do cronograma do projeto - Falta ajustar as datas e verificar a dependencia de cada item

Last finish stays 2021-11-11.

Changed:

| ID | Task | Start | Finish | Duration | Predecessors |
| --- | --- | --- | --- | --- | --- |
| 31 | MOR |  |  |  | none → 32 |
| 40 | **Desenvolvimento do sistema** | 2021-04-07 A → 2021-04-07 |  |  |  |
| 51 | **Back-End** | 2021-04-07 A → 2021-03-24 A (-14d) | 2021-04-07 → 2021-09-20 (+166d) | 1d? → 129d? |  |
| 52 | Login do Usuário |  |  |  | none → 16, 44 |
| 53 | Cadastro do Usuário |  |  |  | none → 11, 43 |
| 54 | Perfil | 2021-04-07 → 2021-09-20 (+166d) | 2021-04-07 → 2021-09-20 (+166d) |  | none → 16, 17, 47, 19, 20, 12, 22, 23 |
| 55 | Feed | 2021-04-07 → 2021-05-05 (+28d) | 2021-04-07 → 2021-05-05 (+28d) |  | none → 21, 45 |
| 56 | Trailer Especifico | 2021-04-07 → 2021-04-27 (+20d) | 2021-04-07 → 2021-04-27 (+20d) |  | none → 21 |
| 57 | Login Admin | 2021-04-07 → 2021-04-08 (+1d) | 2021-04-07 → 2021-04-08 (+1d) |  | none → 16, 48 |
| 58 | Gerenciador de usuários | 2021-04-07 → 2021-04-21 (+14d) | 2021-04-07 → 2021-04-21 (+14d) |  | none → 12, 17, 20 |
| 59 | Gerenciador Comentários | 2021-04-07 → 2021-03-24 (-14d) | 2021-04-07 → 2021-03-24 (-14d) |  | none → 13, 14, 15 |

## Version 5 (saved 2021-09-13)

Note of the change: atualização no mer

Last finish stays 2021-11-11.

Changed:

| ID | Task | Complete |
| --- | --- | --- |
| 1 | **Projeto de Final de Curso - Cinefy** | 82% → 83% |
