# ProjetoCinefy

How a schedule from MS Project changed from version to version. A marks actual dates.

## Version 1 (saved 2021-03-26)

Note of the change: Arquivo gerenciamento de software 80% concluido

| ID | WBS | Task | Duration | Start | Finish | Predecessors | Complete | Total float |
| --- | --- | --- | --- | --- | --- | --- | --- | --- |
| 1 | 1 | **Projeto de Final de Curso - Cinefy** | 189d | 2020-08-24 A | 2021-05-13 |  | 85% | 0d |
| 2 | 1.1 | **Documentação Cinefy** | 71d | 2020-08-24 A | 2020-12-01 A |  | 100% |  |
| 3 |  | Documento de introdução do PFC | 1d | 2020-08-24 A | 2020-08-24 A |  | 100% |  |
| 4 |  | Documento de visão | 10d | 2020-08-26 A | 2020-09-08 A | 3 | 100% |  |
| 5 |  | Atividades do negócio | 6d | 2020-09-09 A | 2020-09-16 A | 4 | 100% |  |
| 6 |  | Documento de requisitos | 5d | 2020-09-17 A | 2020-09-23 A | 5 | 100% |  |
| 7 |  | Relatório de viablidade | 5d | 2020-09-24 A | 2020-09-30 A | 6 | 100% |  |
| 8 |  | Início da diagramação da UML | 0d | 2020-10-01 A | 2020-10-01 A | 7 | 100% |  |
| 9 | 1.1.7 | **UML** | 43d | 2020-10-01 A | 2020-11-30 A |  | 100% |  |
| 10 |  | Diagrama de caso de uso geral | 8d | 2020-10-01 A | 2020-10-12 A | 8 | 100% |  |
| 11 |  | Especificação de caso de uso | 6d | 2020-10-13 A | 2020-10-20 A | 10 | 100% |  |
| 12 |  | Diagrama de classe | 6d | 2020-10-21 A | 2020-10-28 A | 11 | 100% |  |
| 13 |  | Correções das documentações e UML | 23d | 2020-10-29 A | 2020-11-30 A | 12 | 100% |  |
| 14 |  | Finalização do semestre | 0d | 2020-12-01 A | 2020-12-01 A |  | 100% |  |
| 15 | 1.2 | **Recesso** | 52d | 2020-12-01 A | 2021-02-10 A | 2 | 100% |  |
| 16 |  | Imersão JavaScript | 15d | 2020-12-01 A | 2020-12-21 A |  | 100% |  |
| 17 |  | Férias | 24d | 2020-12-22 A | 2021-01-22 A |  | 100% |  |
| 18 |  | Retorno aos estudos de programação | 13d | 2021-01-25 A | 2021-02-10 A |  | 100% |  |
| 19 |  | Retorno ao projeto | 0d | 2021-02-10 A | 2021-02-10 A |  | 100% |  |
| 20 | 1.3 | **Diagrama de Sequência** | 32d | 2021-02-11 | 2021-03-26 A | 15 | 100% |  |
| 21 |  | CreateResenha | 4d | 2021-02-12 A | 2021-02-17 A |  | 100% |  |
| 22 |  | CreateUsuario | 4d | 2021-02-18 A | 2021-02-23 A | 21 | 100% |  |
| 23 |  | DeleteUsuario | 4d | 2021-02-24 A | 2021-03-01 A | 22 | 100% |  |
| 24 |  | DeleteResenha | 4d | 2021-03-02 A | 2021-03-05 A | 23 | 100% |  |
| 25 |  | ReadResenha | 4d | 2021-03-08 A | 2021-03-11 A | 24 | 100% |  |
| 26 |  | ReadUsuario | 4d | 2021-03-12 A | 2021-03-17 A | 25 | 100% |  |
| 27 |  | UpdateResenha | 4d | 2021-03-18 A | 2021-03-23 A | 26 | 100% |  |
| 28 |  | UpdateUsuario | 3d | 2021-03-24 A | 2021-03-26 A | 27 | 100% |  |
| 29 | 1.4 | **Arquitetura de Sistemas** | 26d | 2021-02-19 A | 2021-03-26 A |  | 100% |  |
| 30 |  | Diagrama de contexto | 6d | 2021-02-19 A | 2021-02-26 A |  | 100% |  |
| 31 |  | Diagrama de pacotes | 6d | 2021-03-05 A | 2021-03-12 A | 30 | 100% |  |
| 32 |  | Diagrama de componentes da aplicação/software | 6d | 2021-03-19 A | 2021-03-26 A | 31 | 100% |  |
| 33 |  | Diagrama de dados | 4d | 2021-04-01 | 2021-04-06 |  |  |  |
| 34 |  | Início do desenvolvimento | 0d | 2021-04-21 | 2021-04-21 |  |  |  |
| 35 | 1.7 | **Desenvolvimento do sistema** | 27d | 2021-04-07 | 2021-05-13 | 33 |  | 0d |
| 36 |  | Página index | 3d | 2021-04-07 | 2021-04-09 |  |  |  |
| 37 |  | Página Cadastro | 4d | 2021-04-12 | 2021-04-15 | 36 |  |  |
| 38 |  | Página Login | 5d | 2021-04-16 | 2021-04-22 | 37 |  |  |
| 39 |  | Página Trailers dos Filmes | 8d | 2021-04-23 | 2021-05-04 | 38 |  |  |
| 40 |  | Componente Comentários Trailer | 7d | 2021-05-05 | 2021-05-13 | 39 |  |  |

## Version 2 (saved 2021-03-26)

Note of the change: Cronograma e EAP - Cinefy Finalizado

Last finish stays 2021-05-13.

Changed:

| ID | Task | Other |
| --- | --- | --- |
| 1 | **Projeto de Final de Curso - Cinefy** | baseline start none → 2020-08-24; baseline finish none → 2021-05-13 |
| 3 | Documento de introdução do PFC | resources none → Analista de sistema uml |
| 4 | Documento de visão | resources none → Analista de sistema uml |
| 5 | Atividades do negócio | resources none → Analista de sistema uml |
| 6 | Documento de requisitos | resources none → Analista de sistema uml |
| 7 | Relatório de viablidade | resources none → Analista de sistema uml |
| 10 | Diagrama de caso de uso geral | resources none → Analista de sistema uml |
| 11 | Especificação de caso de uso | resources none → Analista de sistema uml |
| 12 | Diagrama de classe | resources none → Analista de sistema uml |
| 13 | Correções das documentações e UML | resources none → Analista de sistema uml |
| 15 | **Recesso** | baseline finish 2021-02-11 → 2021-02-10 |
| 19 | Retorno ao projeto | baseline start 2021-02-11 → 2021-02-10; baseline finish 2021-02-11 → 2021-02-10 |
| 20 | **Diagrama de Sequência** | baseline start none → 2021-02-11; baseline finish none → 2021-03-26 |
| 21 | CreateResenha | resources none → Analista de sistema uml; baseline start none → 2021-02-12; baseline finish none → 2021-02-17 |
| 22 | CreateUsuario | baseline start none → 2021-02-18; baseline finish none → 2021-02-23 |
| 23 | DeleteUsuario | baseline start none → 2021-02-24; baseline finish none → 2021-03-01 |
| 24 | DeleteResenha | baseline start none → 2021-03-02; baseline finish none → 2021-03-05 |
| 25 | ReadResenha | baseline start none → 2021-03-08; baseline finish none → 2021-03-11 |
| 26 | ReadUsuario | baseline start none → 2021-03-12; baseline finish none → 2021-03-17 |
| 27 | UpdateResenha | baseline start none → 2021-03-18; baseline finish none → 2021-03-23 |
| 28 | UpdateUsuario | baseline start none → 2021-03-24; baseline finish none → 2021-03-26 |
| 29 | **Arquitetura de Sistemas** | baseline start none → 2021-02-19; baseline finish none → 2021-03-26 |
| 30 | Diagrama de contexto | resources none → Engenherio de Software; baseline start none → 2021-02-19; baseline finish none → 2021-02-26 |
| 31 | Diagrama de pacotes | resources none → Engenherio de Software; baseline start none → 2021-03-05; baseline finish none → 2021-03-12 |
| 32 | Diagrama de componentes da aplicação/software | resources none → Engenherio de Software; baseline start none → 2021-03-19; baseline finish none → 2021-03-26 |
| 33 | Diagrama de dados | resources none → Engenherio de Software; baseline start none → 2021-04-01; baseline finish none → 2021-04-06 |
| 34 | Início do desenvolvimento | baseline start none → 2021-04-21; baseline finish none → 2021-04-21 |
| 35 | **Desenvolvimento do sistema** | baseline start none → 2021-04-07; baseline finish none → 2021-05-13 |
| 36 | Página index | resources none → Front-End; baseline start none → 2021-04-07; baseline finish none → 2021-04-09 |
| 37 | Página Cadastro | resources none → Full-Stack; baseline start none → 2021-04-12; baseline finish none → 2021-04-15 |
| 38 | Página Login | resources none → Full-Stack; baseline start none → 2021-04-16; baseline finish none → 2021-04-22 |
| 39 | Página Trailers dos Filmes | resources none → Full-Stack; baseline start none → 2021-04-23; baseline finish none → 2021-05-04 |
| 40 | Componente Comentários Trailer | resources none → Full-Stack; baseline start none → 2021-05-05; baseline finish none → 2021-05-13 |

## Version 3 (saved 2021-03-26)

Note of the change: Finalizado - Cronograma de gerenciamento de software

Last finish stays 2021-05-13.

Added:

| ID | Task | Duration | Start | Finish | Predecessors |
| --- | --- | --- | --- | --- | --- |
| 41 | Entrega do Projeto parte 1 | 0d | 2021-05-13 | 2021-05-13 | 40 |

Changed:

| ID | Task | Finish | Duration | Other |
| --- | --- | --- | --- | --- |
| 1 | **Projeto de Final de Curso - Cinefy** |  | 189d → 188d |  |
| 35 | **Desenvolvimento do sistema** | 2021-05-13 → 2021-05-12 (-1d) | 27d → 26d | baseline finish 2021-05-13 → 2021-05-12 |
| 40 | Componente Comentários Trailer | 2021-05-13 → 2021-05-12 (-1d) | 7d → 6d | baseline finish 2021-05-13 → 2021-05-12 |
